# detail_transition_iteration

Schedule from MS Project, 1999-05-03 to 1999-05-15.
Rational Software Corporation

## Calendars

- Standard: Mon-Fri 08:00-12:00, 13:00-17:00; Sat-Sun off. Exceptions (off unless hours are given): 1999-05-01 to 1999-05-31 08:00-12:00, 13:00-17:00.

## Resources

| Resource |
| --- |
| Fred |
| System Analyst |
| Architect |
| Designer |
| Design Reviewer |
| Project Manager |
| Project Reviewer |
| Requirements Reviewer |
| Capsule Designer |
| Database Designer |
| Architecture Reviewer |
| System Integrator |
| Implementer |
| Code Reviewer |
| Test Designer |
| Tester |
| Process Engineer |
| Toolsmith |
| Business-Process Analyst |
| User-Interface Designer |
| Technical Writer |
| System Administrator |
| Any Worker |
| Configuration Manager |
| Change Control Manager |
| Deployment Manager |
| Course Developer |
| Graphic Artist |
| Tool Specialist |
| Software Architect |
| Integrator |
| 1.5 days |
| 8 days |
| 10 days |
| 6 days |
| 5 days |
| Test Manager |
| Test Analyst |

## Schedule

| ID | WBS | Task | Duration | Start | Finish | Predecessors | Total slack | Constraint | Resources | Work |
| --- | --- | --- | --- | --- | --- | --- | --- | --- | --- | --- |
| 1 | 1 | **Project Management** | 13d | 1999-05-03 | 1999-05-15 |  | 0d |  |  | 1016h |
| 2 | 1.1 | **Manage Iteration** | 12d | 1999-05-03 | 1999-05-14 |  | 0d |  |  | 480h |
| 3 | 1.1.1 | Acquire Staff | 12d | 1999-05-03 | 1999-05-14 |  | 0d |  | Project Manager | 96h |
| 4 | 1.1.2 | Initiate Iteration | 12d | 1999-05-03 | 1999-05-14 |  | 0d |  | Project Manager | 96h |
| 5 | 1.1.3 | Assess Iteration | 12d | 1999-05-03 | 1999-05-14 |  | 0d |  | Project Manager | 96h |
| 6 | 1.1.4 | Iteration Evaluation Criteria Review | 12d | 1999-05-03 | 1999-05-14 |  | 0d |  | Project Reviewer | 96h |
| 7 | 1.1.5 | Iteration Acceptance Review | 12d | 1999-05-03 | 1999-05-14 |  | 0d |  | Project Reviewer | 96h |
| 8 | 1.2 | **Monitor and Control Project** | 13d | 1999-05-03 | 1999-05-15 | 2SS | 0d |  |  | 520h |
| 9 | 1.2.1 | Schedule and Assign Work | 13d | 1999-05-03 | 1999-05-15 |  | 0d |  | Project Manager | 104h |
| 10 | 1.2.2 | Monitor Project Status | 13d | 1999-05-03 | 1999-05-15 |  | 0d | start no earlier than 1999-05-03 | Project Manager | 104h |
| 11 | 1.2.3 | Report Status | 13d | 1999-05-03 | 1999-05-15 |  | 0d |  | Project Manager | 104h |
| 12 | 1.2.4 | Handle Exceptions and Problems | 13d | 1999-05-03 | 1999-05-15 |  | 0d |  | Project Manager | 104h |
| 13 | 1.2.5 | Project Review Authority (PRA) Project Review | 13d | 1999-05-03 | 1999-05-15 |  | 0d |  | Project Reviewer | 104h |
| 14 | 1.3 | **Close-Out Project** | 1d | 1999-05-15 | 1999-05-15 | 2, 102 | 0d |  |  | 16h |
| 15 | 1.3.1 | Prepare for Project Close-Out | 1d | 1999-05-15 | 1999-05-15 |  | 0d |  | Project Manager | 8h |
| 16 | 1.3.2 | Project Acceptance Review | 1d | 1999-05-15 | 1999-05-15 |  | 0d |  | Project Reviewer | 8h |
| 17 | 2 | **Requirements** | 13d | 1999-05-03 | 1999-05-15 |  | 0d |  |  | 312h |
| 18 | 2.1 | **Manage Changing Requirements** | 13d | 1999-05-03 | 1999-05-15 |  | 0d |  |  | 312h |
| 19 | 2.1.1 | Structure the Use-Case Model | 13d | 1999-05-03 | 1999-05-15 |  | 0d |  | System Analyst | 104h |
| 20 | 2.1.2 | Manage Dependencies | 13d | 1999-05-03 | 1999-05-15 |  | 0d |  | System Analyst | 104h |
| 21 | 2.1.3 | Review Requirements | 13d | 1999-05-03 | 1999-05-15 |  | 0d |  | Requirements Reviewer | 104h |
| 22 | 3 | **Analysis and Design** | 11d | 1999-05-03 | 1999-05-13 |  | 2d |  |  | 528h |
| 23 | 3.1 | **Refine the Architecture** | 11d | 1999-05-03 | 1999-05-13 |  | 2d |  |  | 528h |
| 24 | 3.1.1 | Identify Design Mechanisms | 11d | 1999-05-03 | 1999-05-13 |  | 2d |  | Software Architect | 88h |
| 25 | 3.1.2 | Identify Design Elements | 11d | 1999-05-03 | 1999-05-13 |  | 2d |  | Software Architect | 88h |
| 26 | 3.1.3 | Incorporate Existing Design Elements | 11d | 1999-05-03 | 1999-05-13 |  | 2d |  | Software Architect | 88h |
| 27 | 3.1.4 | Describe the Run-time Architecture | 11d | 1999-05-03 | 1999-05-13 |  | 2d |  | Software Architect | 88h |
| 28 | 3.1.5 | Describe Distribution | 11d | 1999-05-03 | 1999-05-13 |  | 2d |  | Software Architect | 88h |
| 29 | 3.1.6 | Review the Architecture | 11d | 1999-05-03 | 1999-05-13 |  | 2d |  | Architecture Reviewer | 88h |

| ID | WBS | Task | Duration | Start | Finish | Predecessors | Total slack | Free slack | Resources | Work |
| --- | --- | --- | --- | --- | --- | --- | --- | --- | --- | --- |
| 30 | 4 | **Implementation** | 8d | 1999-05-03 | 1999-05-10 |  | 3d |  |  | 296h |
| 31 | 4.1 | **Plan the Integration** | 2d | 1999-05-03 | 1999-05-04 |  | 6d | 0d |  | 16h |
| 32 | 4.1.1 | Plan System Integration | 2d | 1999-05-03 | 1999-05-04 |  | 6d |  | Integrator | 16h |
| 33 | 4.2 | **Implement Components** | 5d | 1999-05-03 | 1999-05-07 |  | 8d | 1d |  | 200h |
| 34 | 4.2.1 | Plan Subsystem Integration | 5d | 1999-05-03 | 1999-05-07 |  | 8d |  | Integrator | 40h |
| 35 | 4.2.2 | Implement Component | 5d | 1999-05-03 | 1999-05-07 |  | 8d |  | Implementer | 40h |
| 36 | 4.2.3 | Fix a Defect | 5d | 1999-05-03 | 1999-05-07 |  | 8d |  | Implementer | 40h |
| 37 | 4.2.4 | Perform Unit Tests | 5d | 1999-05-03 | 1999-05-07 |  | 8d |  | Implementer | 40h |
| 38 | 4.2.5 | Review Code | 5d | 1999-05-03 | 1999-05-07 |  | 8d |  | Code Reviewer | 40h |
| 39 | 4.3 | **Integrate Each Subsystem** | 5d | 1999-05-05 | 1999-05-09 | 33SS+1d, 31 | 6d | 0d |  | 40h |
| 40 | 4.3.1 | Integrate Subsystem | 5d | 1999-05-05 | 1999-05-09 |  | 6d |  | Integrator | 40h |
| 41 | 4.4 | **Integrate the System** | 5d | 1999-05-06 | 1999-05-10 | 39SS+1d | 0d |  |  | 40h |
| 42 | 4.4.1 | Integrate System | 5d | 1999-05-06 | 1999-05-10 |  | 0d |  | Integrator | 40h |
| 43 | 5 | **Test** | 11.5d | 1999-05-03 | 1999-05-14 |  | 1.5d |  |  | 2032h |
| 44 | 5.1 | **Define Evaluation Mission** | 1.5d | 1999-05-03 | 1999-05-04 |  | 1.5d | 0d |  | 72h |
| 45 | 5.1.1 | Identify Test Motivators | 1.5d | 1999-05-03 | 1999-05-04 |  | 1.5d |  | Test Manager | 12h |
| 46 | 5.1.2 | Agree Mission | 1.5d | 1999-05-03 | 1999-05-04 |  | 1.5d |  | Test Manager | 12h |
| 47 | 5.1.3 | Identify Targets of Test | 1.5d | 1999-05-03 | 1999-05-04 |  | 1.5d |  | Test Analyst | 12h |
| 48 | 5.1.4 | Define Assessment and Traceability Needs | 1.5d | 1999-05-03 | 1999-05-04 |  | 1.5d |  | Test Analyst | 12h |
| 49 | 5.1.5 | Identify Test Ideas | 1.5d | 1999-05-03 | 1999-05-04 |  | 1.5d |  | Test Analyst | 12h |
| 50 | 5.1.6 | Define Test Approach | 1.5d | 1999-05-03 | 1999-05-04 |  | 1.5d |  | Test Designer | 12h |
| 51 | 5.2 | **Validate Build Stability** | 8d | 1999-05-06 | 1999-05-14 | 58SS+2d | 1.5d |  |  | 384h |
| 52 | 5.2.1 | Implement Test | 8d | 1999-05-06 | 1999-05-14 |  | 1.5d |  | Tester | 64h |
| 53 | 5.2.2 | Execute Test Suite | 8d | 1999-05-06 | 1999-05-14 |  | 1.5d |  | Tester | 64h |
| 54 | 5.2.3 | Analyze Test Failure | 8d | 1999-05-06 | 1999-05-14 |  | 1.5d |  | Tester | 64h |
| 55 | 5.2.4 | Define Test Details | 8d | 1999-05-06 | 1999-05-14 |  | 1.5d |  | Test Analyst | 64h |
| 56 | 5.2.5 | Determine Test Results | 8d | 1999-05-06 | 1999-05-14 |  | 1.5d |  | Test Analyst | 64h |
| 57 | 5.2.6 | Assess and Advocate Quality | 8d | 1999-05-06 | 1999-05-14 |  | 1.5d |  | Test Manager | 64h |

| ID | WBS | Task | Duration | Start | Finish | Predecessors | Total slack | Free slack | Resources | Work |
| --- | --- | --- | --- | --- | --- | --- | --- | --- | --- | --- |
| 58 | 5.3 | **Test and Evaluate** | 10d | 1999-05-04 | 1999-05-14 | 44 | 1.5d | 0d |  | 880h |
| 59 | 5.3.1 | Implement Test | 10d | 1999-05-04 | 1999-05-14 |  | 1.5d |  | Tester | 80h |
| 60 | 5.3.2 | Implement Test Suite | 10d | 1999-05-04 | 1999-05-14 |  | 1.5d |  | Tester | 80h |
| 61 | 5.3.3 | Execute Test Suite | 10d | 1999-05-04 | 1999-05-14 |  | 1.5d |  | Tester | 80h |
| 62 | 5.3.4 | Analyze Test Failure | 10d | 1999-05-04 | 1999-05-14 |  | 1.5d |  | Tester | 80h |
| 63 | 5.3.5 | Structure the Test Implementation | 10d | 1999-05-04 | 1999-05-14 |  | 1.5d |  | Test Designer | 80h |
| 64 | 5.3.6 | Define Testability Elements | 10d | 1999-05-04 | 1999-05-14 |  | 1.5d |  | Test Designer | 80h |
| 65 | 5.3.7 | Identify Test Ideas | 10d | 1999-05-04 | 1999-05-14 |  | 1.5d |  | Test Analyst | 80h |
| 66 | 5.3.8 | Define Test Details | 10d | 1999-05-04 | 1999-05-14 |  | 1.5d |  | Test Analyst | 80h |
| 67 | 5.3.9 | Verify Changes in Build | 10d | 1999-05-04 | 1999-05-14 |  | 1.5d |  | Test Analyst | 80h |
| 68 | 5.3.10 | Determine Test Results | 10d | 1999-05-04 | 1999-05-14 |  | 1.5d |  | Test Analyst | 80h |
| 69 | 5.3.11 | Assess and Improve Test Effort | 10d | 1999-05-04 | 1999-05-14 |  | 1.5d |  | Test Manager | 80h |
| 70 | 5.4 | **Achieve Acceptable Mission** | 6d | 1999-05-08 | 1999-05-14 | 58SS+4d | 1.5d |  |  | 336h |
| 71 | 5.4.1 | Assess and Improve Test Effort | 6d | 1999-05-08 | 1999-05-14 |  | 1.5d |  | Test Manager | 48h |
| 72 | 5.4.2 | Assess and Advocate Quality | 6d | 1999-05-08 | 1999-05-14 |  | 1.5d |  | Test Manager | 48h |
| 73 | 5.4.3 | Determine Test Results | 6d | 1999-05-08 | 1999-05-14 |  | 1.5d |  | Test Analyst | 48h |
| 74 | 5.4.4 | Identify Test Ideas | 6d | 1999-05-08 | 1999-05-14 |  | 1.5d |  | Test Analyst | 48h |
| 75 | 5.4.5 | Analyze Test Failure | 6d | 1999-05-08 | 1999-05-14 |  | 1.5d |  | Tester | 48h |
| 76 | 5.4.6 | Implement Test | 6d | 1999-05-08 | 1999-05-14 |  | 1.5d |  | Tester | 48h |
| 77 | 5.4.7 | Implement Test Suite | 6d | 1999-05-08 | 1999-05-14 |  | 1.5d |  | Tester | 48h |
| 78 | 5.5 | **Improve Test Assets** | 5d | 1999-05-09 | 1999-05-14 | 58SS+5d | 1.5d |  |  | 360h |
| 79 | 5.5.1 | Develop Test Guidelines | 5d | 1999-05-09 | 1999-05-14 |  | 1.5d |  | Test Designer | 40h |
| 80 | 5.5.2 | Define Testability Elements | 5d | 1999-05-09 | 1999-05-14 |  | 1.5d |  | Test Designer | 40h |
| 81 | 5.5.3 | Structure the Test Implementation | 5d | 1999-05-09 | 1999-05-14 |  | 1.5d |  | Test Designer | 40h |
| 82 | 5.5.4 | Identify Test Ideas | 5d | 1999-05-09 | 1999-05-14 |  | 1.5d |  | Test Analyst | 40h |
| 83 | 5.5.5 | Define Test Details | 5d | 1999-05-09 | 1999-05-14 |  | 1.5d |  | Test Analyst | 40h |
| 84 | 5.5.6 | Define Assessment and Traceability Needs | 5d | 1999-05-09 | 1999-05-14 |  | 1.5d |  | Test Analyst | 40h |
| 85 | 5.5.7 | Implement Test Suite | 5d | 1999-05-09 | 1999-05-14 |  | 1.5d |  | Tester | 40h |
| 86 | 5.5.8 | Implement Test | 5d | 1999-05-09 | 1999-05-14 |  | 1.5d |  | Tester | 40h |
| 87 | 5.5.9 | Assess and Improve Test Effort | 5d | 1999-05-09 | 1999-05-14 |  | 1.5d |  | Test Manager | 40h |

| ID | WBS | Task | Duration | Start | Finish | Predecessors | Total slack | Resources | Work |
| --- | --- | --- | --- | --- | --- | --- | --- | --- | --- |
| 88 | 6 | **Deployment** | 12d | 1999-05-03 | 1999-05-14 |  | 0d |  | 208h |
| 89 | 6.1 | **Plan Deployment** | 3d | 1999-05-03 | 1999-05-05 |  | 0d |  | 24h |
| 90 | 6.1.1 | Develop Deployment Plan | 2d | 1999-05-03 | 1999-05-04 |  | 0d | Deployment Manager | 16h |
| 91 | 6.1.2 | Define Bill of Materials | 1d | 1999-05-05 | 1999-05-05 | 90 | 0d | Deployment Manager | 8h |
| 92 | 6.2 | **Develop Support Material** | 4d | 1999-05-04 | 1999-05-07 | 89FS-2d | 0d |  | 64h |
| 93 | 6.2.1 | Develop Training Materials | 4d | 1999-05-04 | 1999-05-07 |  | 0d | Course Developer | 32h |
| 94 | 6.2.2 | Develop Support Materials | 4d | 1999-05-04 | 1999-05-07 |  | 0d | Technical Writer | 32h |
| 95 | 6.3 | **Manage Acceptance Test (At Development Site)** | 4d | 1999-05-06 | 1999-05-09 | 92FS-2d | 0d |  | 32h |
| 96 | 6.3.1 | Manage Acceptance Test | 4d | 1999-05-06 | 1999-05-09 |  | 0d | Deployment Manager | 32h |
| 97 | 6.4 | **Produce Deployment Unit** | 2d | 1999-05-09 | 1999-05-10 | 95FS-1d | 0d |  | 24h |
| 98 | 6.4.1 | Write Release Notes | 1d | 1999-05-09 | 1999-05-09 |  | 1d | Deployment Manager | 8h |
| 99 | 6.4.2 | Develop Installation Artifacts | 2d | 1999-05-09 | 1999-05-10 |  | 0d | Implementer | 16h |
| 100 | 6.5 | **Manage Acceptance Test (At Installation Site)** | 3d | 1999-05-11 | 1999-05-13 | 97, 41 | 0d |  | 24h |
| 101 | 6.5.1 | Manage Acceptance Test | 3d | 1999-05-11 | 1999-05-13 |  | 0d | Deployment Manager | 24h |
| 102 | 6.6 | **Package Product** | 9d | 1999-05-06 | 1999-05-14 | 89 | 0d |  | 32h |
| 103 | 6.6.1 | Release to Manufacturing | 1d | 1999-05-13 | 1999-05-13 | 100FS-1d | 0d | Deployment Manager | 8h |
| 104 | 6.6.2 | Verify Manufactured Product | 1d | 1999-05-14 | 1999-05-14 | 103 | 0d | Deployment Manager | 8h |
| 105 | 6.6.3 | Create Product Artwork | 2d | 1999-05-06 | 1999-05-07 |  | 7d | Graphic Artist | 16h |
| 106 | 6.7 | **Provide Access to Download Site** | 1d | 1999-05-14 | 1999-05-14 | 100 | 1d |  | 8h |
| 107 | 6.7.1 | Provide Access to Download Site | 1d | 1999-05-14 | 1999-05-14 |  | 1d | Deployment Manager | 8h |
| 108 | 7 | **Environment** | 13d | 1999-05-03 | 1999-05-15 |  | 0d |  | 200h |
| 109 | 7.1 | **Prepare Environment for an Iteration** | 1d | 1999-05-03 | 1999-05-03 |  | 0d |  | 40h |
| 110 | 7.1.1 | Develop Development Case | 1d | 1999-05-03 | 1999-05-03 |  | 0d | Process Engineer | 8h |
| 111 | 7.1.2 | Develop Project-Specific Templates | 1d | 1999-05-03 | 1999-05-03 |  | 0d | Process Engineer | 8h |
| 112 | 7.1.3 | Launch Development Case | 1d | 1999-05-03 | 1999-05-03 |  | 0d | Process Engineer | 8h |
| 113 | 7.1.4 | Set Up Tools | 1d | 1999-05-03 | 1999-05-03 |  | 0d | Tool Specialist | 8h |
| 114 | 7.1.5 | Verify Tool Configuration & Installation | 1d | 1999-05-03 | 1999-05-03 |  | 0d | Tool Specialist | 8h |

| ID | WBS | Task | Duration | Start | Finish | Predecessors | Total slack | Resources | Work |
| --- | --- | --- | --- | --- | --- | --- | --- | --- | --- |
| 115 | 7.2 | **Prepare Guidelines for an Iteration** | 1d | 1999-05-03 | 1999-05-03 |  | 12d |  | 64h |
| 116 | 7.2.1 | Develop Use-Case Modeling Guidelines | 1d | 1999-05-03 | 1999-05-03 |  | 12d | System Analyst | 8h |
| 117 | 7.2.2 | Develop Business-Modeling Guidelines | 1d | 1999-05-03 | 1999-05-03 |  | 12d | Business-Process Analyst | 8h |
| 118 | 7.2.3 | Develop User-Interface Guidelines | 1d | 1999-05-03 | 1999-05-03 |  | 12d | User-Interface Designer | 8h |
| 119 | 7.2.4 | Develop Design Guidelines | 1d | 1999-05-03 | 1999-05-03 |  | 12d | Software Architect | 8h |
| 120 | 7.2.5 | Develop Programming Guidelines | 1d | 1999-05-03 | 1999-05-03 |  | 12d | Software Architect | 8h |
| 121 | 7.2.6 | Develop Manual Styleguide | 1d | 1999-05-03 | 1999-05-03 |  | 12d | Technical Writer | 8h |
| 122 | 7.2.7 | Develop Test Guidelines | 1d | 1999-05-03 | 1999-05-03 |  | 12d | Test Designer | 8h |
| 123 | 7.2.8 | Develop Tool Guidelines | 1d | 1999-05-03 | 1999-05-03 |  | 12d | Tool Specialist | 8h |
| 124 | 7.3 | **Support Environment During an Iteration** | 12d | 1999-05-04 | 1999-05-15 | 109 | 0d |  | 96h |
| 125 | 7.3.1 | Support Development | 12d | 1999-05-04 | 1999-05-15 |  | 0d | System Administrator | 96h |
| 126 | 8 | **Configuration & Change Management** | 13d | 1999-05-03 | 1999-05-15 |  | 0d |  | 1664h |
| 127 | 8.1 | **Change and Deliver Configuration Items** | 13d | 1999-05-03 | 1999-05-15 |  | 0d |  | 624h |
| 128 | 8.1.1 | Create Baselines | 13d | 1999-05-03 | 1999-05-15 |  | 0d | Integrator | 104h |
| 129 | 8.1.2 | Promote Baselines | 13d | 1999-05-03 | 1999-05-15 |  | 0d | Integrator | 104h |
| 130 | 8.1.3 | Create Development Workspace | 13d | 1999-05-03 | 1999-05-15 |  | 0d | Any Worker | 104h |
| 131 | 8.1.4 | Make Changes | 13d | 1999-05-03 | 1999-05-15 |  | 0d | Any Worker | 104h |
| 132 | 8.1.5 | Deliver Changes | 13d | 1999-05-03 | 1999-05-15 |  | 0d | Any Worker | 104h |
| 133 | 8.1.6 | Update Workspace | 13d | 1999-05-03 | 1999-05-15 |  | 0d | Any Worker | 104h |
| 134 | 8.2 | **Manage Baselines and Releases** | 13d | 1999-05-03 | 1999-05-15 |  | 0d |  | 312h |
| 135 | 8.2.1 | Create Baselines | 13d | 1999-05-03 | 1999-05-15 |  | 0d | Integrator | 104h |
| 136 | 8.2.2 | Promote Baselines | 13d | 1999-05-03 | 1999-05-15 |  | 0d | Integrator | 104h |
| 137 | 8.2.3 | Create Deployment Unit | 13d | 1999-05-03 | 1999-05-15 |  | 0d | Configuration Manager | 104h |
| 138 | 8.3 | **Manage Change Requests** | 13d | 1999-05-03 | 1999-05-15 |  | 0d |  | 520h |
| 139 | 8.3.1 | Submit Change Request | 13d | 1999-05-03 | 1999-05-15 |  | 0d | Any Worker | 104h |
| 140 | 8.3.2 | Update Change Request | 13d | 1999-05-03 | 1999-05-15 |  | 0d | Any Worker | 104h |
| 141 | 8.3.3 | Review Change Request | 13d | 1999-05-03 | 1999-05-15 |  | 0d | Change Control Manager | 104h |
| 142 | 8.3.4 | Confirm Duplicate or Rejected Change Request | 13d | 1999-05-03 | 1999-05-15 |  | 0d | Change Control Manager | 104h |
| 143 | 8.3.5 | Verify Changes in Build | 13d | 1999-05-03 | 1999-05-15 |  | 0d | Integrator | 104h |

| ID | WBS | Task | Duration | Start | Finish | Total slack | Resources | Work |
| --- | --- | --- | --- | --- | --- | --- | --- | --- |
| 144 | 8.4 | **Monitor and Report Configuration Status** | 13d | 1999-05-03 | 1999-05-15 | 0d |  | 208h |
| 145 | 8.4.1 | Report on Configuration Status | 13d | 1999-05-03 | 1999-05-15 | 0d | Configuration Manager | 104h |
| 146 | 8.4.2 | Perform Configuration Audits | 13d | 1999-05-03 | 1999-05-15 | 0d | Configuration Manager | 104h |
